How a schedule from MS Project changed from version to version. A marks actual dates.

## Version 1 (saved 2014-11-07)

Note of the change: Mainboard & Display layout updates - Molex connectors, Mounting Holes, Greenberg Email Additions

| ID | WBS | Task | Duration | Start | Finish | Predecessors | Total float |
| --- | --- | --- | --- | --- | --- | --- | --- |
| 1 |  | Project Start | 0d | 2014-10-06 | 2014-10-06 |  |  |
| 2 | 2 | **Project Planning** | 1d? | 2014-10-06 | 2014-10-06 | 1 | 0d |
| 3 |  | Determine Pros/Cons of all ideas generated. | 1d | 2014-10-06 | 2014-10-06 |  |  |
| 4 |  | Complete Decision Matrix. | 1d | 2014-10-06 | 2014-10-06 |  |  |
| 5 |  | Complete Task Schedule. | 1d? | 2014-10-06 | 2014-10-06 |  |  |
| 6 | 3 | **Research Tasks** | 1d | 2014-11-07 | 2014-11-07 | 2 | 0d |
| 7 |  | Research interfacing with Atmel processor. | 1d | 2014-11-07 | 2014-11-07 |  |  |
| 8 |  | Determine sensor type and source. | 1d | 2014-11-07 | 2014-11-07 |  |  |
| 9 | 4 | **Project Design Specifications** | 1d | 2014-10-06 | 2014-10-06 | 1 | 0d |
| 10 |  | Decide on basic project specifications. | 1d | 2014-10-06 | 2014-10-06 |  |  |
| 11 |  | Complete project proposal. | 1d | 2014-10-06 | 2014-10-06 |  |  |
| 12 | 5 | **Schematic Design** | 1d? | 2014-11-10 | 2014-11-10 | 6 | 0d |
| 13 |  | Display Board Layout with ERC | 1d | 2014-11-10 | 2014-11-10 |  |  |
| 14 |  | Main Board Layout with ERC | 1d | 2014-11-10 | 2014-11-10 |  |  |
| 15 |  | Revise | 1d? | 2014-11-10 | 2014-11-10 |  |  |
| 16 | 6 | **Program Code** | 1d? | 2014-11-07 | 2014-11-10 | 6 | 0d |
| 17 |  | Design polling of sensors for measurements. | 1d? | 2014-11-07 | 2014-11-10 |  |  |
| 18 |  | Assign output values based on display design for lighting patterns. | 1d? | 2014-11-07 | 2014-11-10 |  |  |
| 19 | 7 | **Prototype and Testing** | 1d? | 2014-11-10 | 2014-11-11 | 12, 16 | 0d |
| 20 |  | Breadboard display and test using all valid inputs. | 1d? | 2014-11-10 | 2014-11-11 |  |  |
| 21 |  | Test built display prototype using inputs from Atmel processor. | 1d? | 2014-11-10 | 2014-11-11 |  |  |
| 22 |  | Test controlling individual display lights using Atmel processor. | 1d? | 2014-11-10 | 2014-11-11 |  |  |
| 23 |  | Test individual sensors for range. | 1d? | 2014-11-10 | 2014-11-11 |  |  |
| 24 | 8 | **Board Layout** | 1d? | 2014-11-07 | 2014-11-07 |  | 0d |
| 25 |  | Main board Layout with DRC | 1d? | 2014-11-07 | 2014-11-07 |  |  |
| 26 |  | Display Board Layout with DRC | 1d? | 2014-11-07 | 2014-11-07 |  |  |
| 27 |  | Revise Main broad layout with instructor feedback. | 1d? | 2014-11-07 | 2014-11-07 |  |  |
| 28 |  | Revise display board layout with instructor feedback. | 1d? | 2014-11-07 | 2014-11-07 |  |  |
| 29 | 9 | **Part Sourcing** | 1d? | 2014-11-07 | 2014-11-10 |  | 0d |
| 30 |  | Order DIP package parts for prototype. | 1d? | 2014-11-07 | 2014-11-10 |  |  |
| 31 |  | Order sensors. | 0d | 2014-11-07 | 2014-11-07 | 8 | 2d |
| 32 |  | Order surface mount parts for display build. | 1d | 2014-11-07 | 2014-11-10 |  |  |
| 33 |  | Order surface mount parts for main board build. | 1d? | 2014-11-07 | 2014-11-10 |  |  |
| 34 | 10 | **Review Tasks** | 26d | 2014-10-07 | 2014-11-11 |  | 0d |
| 35 |  | Review Decision Matrix. | 1d | 2014-10-07 | 2014-10-07 | 4 |  |
| 36 |  | Review Project Proposal. | 1d | 2014-10-07 | 2014-10-07 | 11 |  |
| 37 |  | Review Proposed Schedule. | 1d | 2014-10-07 | 2014-10-07 | 5 |  |
| 38 |  | Review Schematics Prior to Instructor Review. | 1d | 2014-11-11 | 2014-11-11 | 13, 14 |  |
| 39 |  | Review Board Layout Prior to Instructor Review. | 1d | 2014-11-10 | 2014-11-10 | 25, 26 | 0d |
| 40 |  | Review Board Layout Prior to Instructor Review. | 1d | 2014-11-11 | 2014-11-11 | 39 |  |
| 41 | 11 | **Documentation Tasks** | 3d? | 2014-11-07 | 2014-11-11 |  | 0d |
| 42 |  | Create Repository and add all users. | 1d | 2014-11-07 | 2014-11-07 |  |  |
| 43 |  | Design basic wiki layout to meet assigned requirements. | 1d? | 2014-11-07 | 2014-11-07 |  |  |
| 44 |  | 26OCT Weekly Progress Report | 1d | 2014-11-07 | 2014-11-07 |  |  |
| 45 |  | 02NOV Weekly Progress Report | 1d | 2014-11-10 | 2014-11-10 | 44 |  |
| 46 |  | 09NOV Weekly Progress Report | 1d | 2014-11-11 | 2014-11-11 | 45 |  |
| 47 | 12 | **Final Presentation** | 1d? | 2014-11-07 | 2014-11-07 |  | 0d |
| 48 |  | Prepare Presentation Materials | 1d? | 2014-11-07 | 2014-11-07 |  |  |
| 49 |  | Full Group Practice | 1d? | 2014-11-07 | 2014-11-07 |  |  |
| 50 |  | Schedule Final Presentation | 1d? | 2014-11-07 | 2014-11-07 |  |  |
| 51 |  | Complete Presentation | 1d? | 2014-11-07 | 2014-11-07 |  |  |

## Version 2 (saved 2014-11-09)

Note of the change: Finished project schedule, posting for review.

Last finish 2014-11-11 → 2014-12-11 (+30d). Complete tasks 0 → 46.

Added:

| ID | Task | Duration | Start | Finish | Predecessors | Constraint | Resources |
| --- | --- | --- | --- | --- | --- | --- | --- |
| 2 | Form Group | 1d | 2014-10-01 A | 2014-10-01 A |  |  |  |
| 3 | **Choose Project** | 2d | 2014-10-01 A | 2014-10-03 A |  |  |  |
| 4 | Generate Project Ideas | 6d | 2014-10-01 A | 2014-10-03 A |  |  | Branden; Dan [50%]; Noah [50%]; Rusty |
| 7 | Decide on project | 0d | 2014-10-03 A | 2014-10-03 A | 6 |  | Branden; Dan; Noah; Rusty |
| 8 | Order Sensors. | 0d | 2014-10-13 A | 2014-10-13 A |  | start no earlier than 2014-10-13 | Dan |
| 10 | **Project Management** | 41d | 2014-10-01 A | 2014-11-24 |  |  |  |
| 13 | Write project proposal | 5d | 2014-10-03 A | 2014-10-05 A | 9 |  | Rusty |
| 14 | Project proposal due | 0d | 2014-10-13 A | 2014-10-13 A |  |  |  |
| 15 | Proposal approved by instructor | 0d | 2014-10-13 A | 2014-10-13 A | 13 |  |  |
| 16 | Write design specifications | 5d | 2014-10-20 A | 2014-10-22 A |  | start no earlier than 2014-10-20 | Rusty |
| 17 | Review design specifications | 1d | 2014-10-25 A | 2014-10-25 A | 16 | start no earlier than 2014-10-25 | Branden; Dan; Noah; Rusty |
| 18 | Design specifications due | 0d | 2014-10-27 A | 2014-10-27 A |  |  |  |
| 19 | Complete task schedule. | 1d | 2014-11-08 A | 2014-11-08 A |  | finish no earlier than 2014-11-08 | Rusty |
| 20 | Review task schedule | 0.88d | 2014-11-09 | 2014-11-09 | 19 |  | Branden; Dan; Noah; Rusty |
| 21 | Task schedule due | 0d | 2014-11-10 | 2014-11-10 |  |  |  |
| 23 | Create system design block models | 1d | 2014-11-12 | 2014-11-13 |  |  | Rusty |
| 24 | Review of block models | 2d | 2014-11-16 | 2014-11-16 | 23 | finish no earlier than 2014-11-16 | Branden; Dan; Noah; Rusty |
| 25 | System design block models due | 0d | 2014-11-17 | 2014-11-17 |  |  |  |
| 26 | Create initial test plan | 1d | 2014-11-17 | 2014-11-18 |  |  | Rusty |
| 27 | Finalize test plan based on lecture | 5.5d | 2014-11-18 | 2014-11-20 | 26 |  | Branden; Dan; Noah; Rusty |
| 28 | Test Plan Due | 0d | 2014-11-24 | 2014-11-24 |  | start no earlier than 2014-11-24 |  |
| 32 | Decide on display type | 1d | 2014-10-13 A | 2014-10-13 A |  |  | Branden; Dan; Noah; Rusty |
| 37 | Decide on packages and source parts | 1d | 2014-10-28 A | 2014-10-28 A | 36 |  | Rusty |
| 38 | Order parts for prototype | 0d | 2014-10-27 A | 2014-10-27 A | 15 |  | Rusty |
| 39 | Draw display schematics | 0.88d | 2014-10-17 A | 2014-10-17 A | 34 |  | Dan |
| 40 | Draw main board schematics | 1d | 2014-10-27 A | 2014-10-28 A | 35 |  | Noah |
| 41 | Preliminary schematics due | 0d | 2014-10-29 A | 2014-10-29 A |  |  |  |
| 42 | Receive schematics feedback from instructor | 0d | 2014-11-03 A | 2014-11-03 A |  |  |  |
| 43 | Revise schematics based on instructor feedback | 6d | 2014-11-03 A | 2014-11-05 A | 42 |  | Branden [25%]; Dan; Noah; Rusty |
| 45 | "Hello World" Arduino | 1d | 2014-10-14 A | 2014-10-14 A |  |  | Noah |
| 46 | Bootload microcontroller on breadboard | 1d | 2014-10-14 A | 2014-10-14 A |  |  | Rusty |
| 47 | Upload Arduino sketches on breadboard | 0.5d | 2014-10-14 A | 2014-10-14 A | 46 |  | Rusty |
| 49 | Write algorithm to process input and output to display | 1d | 2014-10-14 A | 2014-10-15 A | 48 |  | Noah |
| 50 | Code complete | 0d | 2014-10-14 A | 2014-10-14 A |  |  |  |
| 55 | Debug Code | 20d | 2014-11-05 A | 2014-11-12 A | 50 |  | Noah [50%] |
| 56 | Order parts for final build | 0d | 2014-11-07 A | 2014-11-07 A | 53 |  | Dan |
| 61 | Preliminary board layouts due | 0d | 2014-11-05 A | 2014-11-05 A |  | start no earlier than 2014-11-05 |  |
| 62 | Receive instructor feedback on layouts | 0d | 2014-11-07 A | 2014-11-07 A |  |  |  |
| 64 | Fit parts to printed board layout | 0.5d | 2014-11-07 | 2014-11-10 | 63 |  |  |
| 65 | Submit final layouts to Osh Park | 0d | 2014-11-07 | 2014-11-07 | 63 |  |  |
| 66 | **Source or design enclosures** | 0.12d | 2014-11-07 | 2014-11-08 | 65 |  |  |
| 67 | Build enclosures (if not sourced) | 2d | 2014-11-07 | 2014-11-08 |  |  | Rusty |
| 68 | **Assemble finished product** | 3d | 2014-11-17 | 2014-11-19 |  |  |  |
| 69 | Receive boards from Osh Park | 0d | 2014-11-17 | 2014-11-17 |  | start no earlier than 2014-11-17 |  |
| 70 | Populate PCB's | 4d | 2014-11-17 | 2014-11-18 | 69 |  | Branden; Dan; Noah; Rusty |
| 71 | Populate enclosures | 1d | 2014-11-19 | 2014-11-19 | 70 |  |  |
| 72 | **Final Testing** | 8.12d | 2014-11-18 | 2014-11-28 | 70 |  |  |
| 73 | Debug Hardware | 2.5d | 2014-11-18 | 2014-11-19 | 70 |  | Dan; Rusty |
| 74 | Debug Software | 5d | 2014-11-18 | 2014-11-20 | 70 |  | Branden [50%]; Noah [50%] |
| 75 | Confirm proper operation | 6d | 2014-11-26 | 2014-11-28 | 28 |  | Branden; Dan; Noah; Rusty |
| 80 | Give presentation | 0d | 2014-12-11 | 2014-12-11 |  | start no earlier than 2014-12-11 |  |

Removed: 2 Project Planning; 5 Complete Task Schedule.; 9 Project Design Specifications; 11 Complete project proposal.; 18 Assign output values based on display design for lighting patterns.; 21 Test built display prototype using inputs from Atmel processor.; 29 Part Sourcing; 30 Order DIP package parts for prototype.; 31 Order sensors.; 32 Order surface mount parts for display build.; 33 Order surface mount parts for main board build.; 34 Review Tasks; 35 Review Decision Matrix.; 36 Review Project Proposal.; 37 Review Proposed Schedule.; 38 Review Schematics Prior to Instructor Review.; 39 Review Board Layout Prior to Instructor Review.; 40 Review Board Layout Prior to Instructor Review.; 41 Documentation Tasks; 44 26OCT Weekly Progress Report; 45 02NOV Weekly Progress Report; 46 09NOV Weekly Progress Report

Changed:

| ID | Task | Start | Finish | Duration | Complete | Total float | Predecessors | Other |
| --- | --- | --- | --- | --- | --- | --- | --- | --- |
| 1 | Project Start | 2014-10-06 → 2014-10-01 (-5d) | 2014-10-06 → 2014-10-01 (-5d) |  |  | none → 54d |  |  |
| 5 | Determine Pros/Cons of all ideas generated. | 2014-10-06 → 2014-10-01 A (-5d) | 2014-10-06 → 2014-10-02 A (-4d) | 1d → 2d | 0% → 100% |  |  | resources Branden; Dan; Noah; Rusty → Branden; Dan [25%]; Noah [50%]; Rusty |
| 6 | Complete Decision Matrix. | 2014-10-06 → 2014-10-02 A (-4d) | 2014-10-06 → 2014-10-03 A (-3d) | 1d → 4d | 0% → 100% |  | none → 5 | resources Dan; Rusty → Dan [25%]; Rusty |
| 9 | Decide on basic project specifications. | 2014-10-06 → 2014-10-03 A (-3d) | 2014-10-06 → 2014-10-03 A (-3d) |  | 0% → 100% |  | none → 7 |  |
| 11 | Create Repository and add all users. | 2014-11-07 → 2014-10-01 A (-37d) | 2014-11-07 → 2014-10-01 A (-37d) |  | 0% → 100% |  |  |  |
| 12 | Design basic wiki layout to meet assigned requirements. | 2014-11-07 → 2014-10-01 A (-37d) | 2014-11-07 → 2014-10-01 A (-37d) | 1d? → 1d | 0% → 100% |  |  | resources none → Noah |
| 22 | Schedule Final Presentation | 2014-11-07 → 2014-11-10 (+3d) | 2014-11-07 → 2014-11-10 (+3d) | 1d? → 0d |  |  |  | resources none → Rusty |
| 29 | **Research project** | 2014-11-07 → 2014-10-13 A (-25d) | 2014-11-07 → 2014-10-14 A (-24d) |  | 0% → 100% | 0d → none | Project Planning → 15 | was named Research Tasks |
| 30 | Determine sensor type and source. | 2014-11-07 → 2014-10-13 A (-25d) | 2014-11-07 → 2014-10-14 A (-24d) | 1d → 2d | 0% → 100% |  |  |  |
| 31 | Research interfacing with Atmel processor. | 2014-11-07 → 2014-10-13 A (-25d) | 2014-11-07 → 2014-10-14 A (-24d) | 1d → 3d | 0% → 100% |  |  | resources Noah; Rusty → Noah; Branden |
| 33 | **Design Circuit** | 2014-11-10 → 2014-10-17 A (-24d) | 2014-11-10 → 2014-11-05 A (-5d) | 1d? → 14d | 0% → 100% | 0d → none | 29 → 18 | was named Schematic Design |
| 34 | Design display board | 2014-11-10 → 2014-10-27 A (-14d) | 2014-11-10 → 2014-10-27 A (-14d) |  | 0% → 100% |  | none → 32 | was named Display Board Layout with ERC |
| 35 | Design main board | 2014-11-10 → 2014-10-27 A (-14d) | 2014-11-10 → 2014-10-27 A (-14d) |  | 0% → 100% |  | none → 15 | was named Main Board Layout with ERC |
| 36 | Revise | 2014-11-10 → 2014-10-27 A (-14d) | 2014-11-10 → 2014-10-28 A (-13d) | 1d? → 2d | 0% → 100% |  | none → 34, 35 | resources none → Branden [50%]; Rusty [50%] |
| 44 | **Configure Embedded Interface** | 2014-11-07 → 2014-10-14 A (-24d) | 2014-11-10 → 2014-10-15 A (-26d) | 1d? → 1d | 0% → 100% | 0d → none |  | was named Program Code |
| 48 | Write sensor input algorithm | 2014-11-07 → 2014-10-14 A (-24d) | 2014-11-10 → 2014-10-14 A (-27d) | 1d? → 0.5d | 0% → 100% |  | none → 45 | was named Design polling of sensors for measurements.; resources none → Noah |
| 51 | **Prototype and Testing** | 2014-11-10 → 2014-11-05 A (-5d) | 2014-11-11 → 2014-11-12 A (+1d) | 1d? → 5d | 0% → 100% | 0d → none |  |  |
| 52 | Breadboard display and test using all valid inputs. | 2014-11-10 → 2014-11-05 A (-5d) | 2014-11-11 → 2014-11-05 A (-6d) | 1d? → 1d | 0% → 100% |  | none → 38 | resources none → Dan |
| 53 | Test controlling individual display lights using Atmel processor. | 2014-11-10 → 2014-11-05 A (-5d) | 2014-11-11 → 2014-11-07 A (-4d) | 1d? → 4d | 0% → 100% |  | none → 52 | resources none → Branden [25%]; Noah [50%] |
| 54 | Test individual sensors for range. | 2014-11-10 → 2014-11-05 A (-5d) | 2014-11-11 → 2014-11-05 A (-6d) | 1d? → 1d | 0% → 100% |  | none → 8 | resources none → Branden; Rusty |
| 57 | **Create PCB Layouts** | 2014-11-07 → 2014-11-05 A (-2d) | 2014-11-07 → 2014-11-10 (+3d) | 1d? → 3.38d | 0% → 89% | 0d → 24.62d |  | was named Board Layout |
| 58 | Create mainboard layout | 2014-11-07 → 2014-11-05 A (-2d) | 2014-11-07 → 2014-11-05 A (-2d) | 1d? → 1d | 0% → 100% |  | none → 43 | was named Main board Layout with DRC; resources none → Noah |
| 59 | Create display board layout | 2014-11-07 → 2014-11-05 A (-2d) | 2014-11-07 → 2014-11-05 A (-2d) | 1d? → 1d | 0% → 100% |  | none → 43 | was named Display Board Layout with DRC; resources none → Branden |
| 60 | DRC check both layouts | 2014-11-07 → 2014-11-05 A (-2d) | 2014-11-07 → 2014-11-06 A (-1d) | 1d? → 1d | 0% → 100% |  | none → 58 | was named Revise Main broad layout with instructor feedback.; resources none → Rusty |
| 63 | Revise boards with instructor feedback | 2014-11-07 A | 2014-11-07 A | 1d? → 1d | 0% → 100% |  | none → 62 | was named Revise display board layout with instructor feedback.; resources none → Dan |
| 76 | **Final Presentation** | 2014-11-07 → 2014-12-01 (+24d) | 2014-11-07 → 2014-12-05 (+28d) | 1d? → 5d |  | 0d → none |  |  |
| 77 | Prepare Presentation Materials | 2014-11-07 → 2014-12-01 (+24d) | 2014-11-07 → 2014-12-02 (+25d) | 1d? → 3d |  | none → 2d |  | resources none → Branden; Dan; Noah; Rusty |
| 78 | Full Group Practice | 2014-11-07 → 2014-12-02 (+25d) | 2014-11-07 → 2014-12-02 (+25d) | 1d? → 1d |  | none → 3.12d | none → 77 | resources none → Branden; Dan; Noah; Rusty |
| 79 | Complete Presentation | 2014-11-07 → 2014-12-02 (+25d) | 2014-11-07 → 2014-12-03 (+26d) | 1d? → 2d |  | none → 2d | none → 77 |  |

## Version 3 (data date 2014-12-12, saved 2014-11-10)

Note of the change: Pushing System Design and Modeling.pdf homework assignment. Complete.

Last finish stays 2014-12-11. Complete tasks 46 → 50.

Added:

| ID | Task | Duration | Start | Finish | Predecessors | Resources |
| --- | --- | --- | --- | --- | --- | --- |
| 56 | Multiple Sensor Debugging | 3d | 2014-10-16 A | 2014-10-17 A | 50 | Noah [50%] |
| 57 | Display Timing and Pattern Debugging | 3d | 2014-11-05 A | 2014-11-06 A | 50, 33, 44 | Noah |
| 58 | Always On LED Revision Debugging and Testing | 3d | 2014-11-07 A | 2014-11-08 A | 57 | Noah |
| 59 | Display Enable Revision Debugging and Testing | 4d | 2014-11-08 A | 2014-11-09 A | 58, 33, 44 | Noah |

Changed:

| ID | Task | Start | Finish | Duration | Complete | Total float | Predecessors | Other |
| --- | --- | --- | --- | --- | --- | --- | --- | --- |
| 2 | Form Group |  |  |  |  |  | none → 1 |  |
| 4 | Generate Project Ideas |  |  | 6d → 5d |  |  | none → 2 |  |
| 5 | Determine Pros/Cons of all ideas generated. |  |  |  |  |  | none → 4 |  |
| 8 | Order Sensors |  |  |  |  |  |  | was named Order Sensors. |
| 9 | Decide on basic project specifications |  |  |  |  |  |  | was named Decide on basic project specifications. |
| 10 | **Project Management** |  |  |  | 57% → 51% |  |  |  |
| 11 | Create Repository and add all users |  |  |  |  |  |  | was named Create Repository and add all users.; resources Dan → Dan [50%] |
| 12 | Design basic wiki layout to meet assigned requirements |  |  |  |  |  |  | was named Design basic wiki layout to meet assigned requirements.; resources Noah → Noah [50%] |
| 16 | Write design specifications |  |  |  |  |  | none → 15 |  |
| 18 | Design specifications due |  |  |  |  |  | none → 17 |  |
| 19 | Complete task schedule |  |  |  |  |  |  | was named Complete task schedule. |
| 20 | Review task schedule | 2014-11-09 → 2014-11-08 (-1d) |  | 0.88d → 1d |  | none → 25d |  |  |
| 23 | Create system design block models | 2014-11-12 → 2014-11-10 (-2d) | 2014-11-13 → 2014-11-14 (+1d) | 1d → 5d |  |  |  |  |
| 25 | System design block models due | 2014-11-17 → 2014-11-16 (-1d) | 2014-11-17 → 2014-11-16 (-1d) |  |  | none → 18d | none → 24 |  |
| 26 | Create initial test plan | 2014-11-17 → 2014-11-05 (-12d) | 2014-11-18 → 2014-11-05 (-13d) | 1d → 2d |  | none → 25d | none → 33 |  |
| 27 | Finalize test plan based on lecture | 2014-11-18 → 2014-11-05 (-13d) | 2014-11-20 → 2014-11-08 (-12d) | 5.5d → 3.5d |  | 14.12d → 25d |  | resources Branden; Dan; Noah; Rusty → Branden; Dan; Noah |
| 30 | Determine sensor type and source |  |  |  |  |  |  | was named Determine sensor type and source. |
| 31 | Research interfacing with Atmel processor |  |  |  |  |  |  | was named Research interfacing with Atmel processor. |
| 34 | Design display board |  |  |  |  |  | 32 → 39 |  |
| 39 | Draw display schematics |  |  |  |  |  | 34 → 32 |  |
| 43 | Revise schematics based on instructor feedback |  |  | 6d → 5d |  |  |  |  |
| 51 | **Prototype and Testing** | 2014-11-05 A → 2014-10-16 A (-20d) | 2014-11-12 A → 2014-11-09 A (-3d) | 5d → 17.5d |  |  | 33, 44 → none |  |
| 52 | Breadboard display and test using all valid inputs |  |  |  |  |  | 38 → 38, 33, 44 | was named Breadboard display and test using all valid inputs. |
| 53 | Test controlling individual display lights using Atmel processor |  |  |  |  |  |  | was named Test controlling individual display lights using Atmel processor. |
| 55 | **Debug Code and Board to Board Connections** | 2014-11-05 A → 2014-10-16 A (-20d) | 2014-11-12 A → 2014-11-09 A (-3d) | 20d → 17.5d |  |  | 50 → none | was named Debug Code; resources Noah [50%] → none |
| 61 | **Create PCB Layouts** |  |  |  | 89% → 99% | 24.62d → 16.62d |  |  |
| 68 | Fit parts to printed board layout | 2014-11-07 A | 2014-11-10 A |  | 0% → 100% | 24.62d → none |  |  |
| 72 | **Assemble finished product** |  | 2014-11-19 → 2014-11-21 (+2d) | 3d → 4.88d |  | 2d → 8.12d |  |  |
| 73 | Receive boards from Osh Park |  |  |  |  | 15d → 13d | none → 69 |  |
| 75 | Populate enclosures | 2014-11-19 → 2014-11-18 (-1d) | 2014-11-19 → 2014-11-21 (+2d) | 1d → 3d |  | none → 8.12d |  |  |
| 76 | **Final Testing** | 2014-11-18 → 2014-11-21 (+3d) | 2014-11-28 → 2014-11-25 (-3d) | 8.12d → 1.12d |  | 8d → 8.12d | 74 → 72 |  |
| 77 | Debug Hardware | 2014-11-18 → 2014-11-21 (+3d) | 2014-11-19 → 2014-11-22 (+3d) |  |  | 15.5d → 9.12d |  |  |
| 78 | Debug Software | 2014-11-18 → 2014-11-21 (+3d) | 2014-11-20 → 2014-11-23 (+3d) |  |  | 15d → 8.12d |  |  |
| 79 | Confirm proper operation | 2014-11-26 → 2014-11-23 (-3d) | 2014-11-28 → 2014-11-25 (-3d) | 6d → 5d |  | 8d → 9d | 28 → 27, 77, 78 |  |
| 80 | **Final Presentation** | 2014-12-01 → 2014-11-25 (-6d) | 2014-12-05 → 2014-12-11 (+6d) | 5d → 12d |  | none → 0d | none → 79 |  |
| 81 | Prepare Presentation Materials | 2014-12-01 → 2014-11-25 (-6d) | 2014-12-02 → 2014-11-26 (-6d) |  |  | 2d → 8.88d |  |  |
| 82 | Full Group Practice | 2014-12-02 → 2014-11-27 (-5d) | 2014-12-02 → 2014-11-28 (-4d) | 1d → 2d |  | 3.12d → 8.88d | 81 → 83 |  |
| 83 | Complete Presentation | 2014-12-02 → 2014-11-26 (-6d) | 2014-12-03 → 2014-11-27 (-6d) |  |  | 2d → 8.88d |  |  |

## Version 4 (data date 2014-12-12, saved 2014-11-18)

Note of the change: Updated project schedule

Last finish stays 2014-12-11. Complete tasks 50 → 64.

Changed:

| ID | Task | Start | Finish | Complete | Total float | Predecessors |
| --- | --- | --- | --- | --- | --- | --- |
| 1 | Project Start | 2014-10-01 A | 2014-10-01 A | 0% → 100% | 54d → none |  |
| 10 | **Project Management** |  | 2014-11-24 A | 51% → 100% | 13d → none |  |
| 20 | Review task schedule | 2014-11-08 A | 2014-11-09 A | 0% → 100% | 25d → none |  |
| 21 | Task schedule due | 2014-11-10 A | 2014-11-10 A | 0% → 100% |  |  |
| 22 | Schedule Final Presentation | 2014-11-10 A | 2014-11-10 A | 0% → 100% |  |  |
| 23 | Create system design block models | 2014-11-10 A | 2014-11-14 A | 0% → 100% |  |  |
| 24 | Review of block models | 2014-11-16 A | 2014-11-16 A | 0% → 100% | 18d → none |  |
| 25 | System design block models due | 2014-11-16 A | 2014-11-16 A | 0% → 100% | 18d → none |  |
| 26 | Create initial test plan | 2014-11-05 A | 2014-11-05 A | 0% → 100% | 25d → none |  |
| 27 | Finalize test plan based on lecture | 2014-11-05 A | 2014-11-08 A | 0% → 100% | 25d → none |  |
| 28 | Test Plan Due | 2014-11-24 A | 2014-11-24 A | 0% → 100% | 7.38d → none |  |
| 61 | **Create PCB Layouts** |  | 2014-11-10 A | 99% → 100% | 16.62d → none |  |
| 69 | Submit final layouts to Osh Park | 2014-11-07 A | 2014-11-07 A | 0% → 100% | 25d → none |  |
| 70 | **Source or design enclosures** | 2014-11-07 → 2014-11-18 A (+11d) | 2014-11-08 → 2014-11-19 (+11d) | 0% → 50% | 25d → 16d |  |
| 71 | Build enclosures (if not sourced) | 2014-11-07 → 2014-11-18 A (+11d) | 2014-11-08 → 2014-11-19 (+11d) | 0% → 50% | 25d → 16d | none → 74 |
| 72 | **Assemble finished product** | 2014-11-17 A | 2014-11-21 A | 0% → 100% | 8.12d → none |  |
| 73 | Receive boards from Osh Park | 2014-11-17 A | 2014-11-17 A | 0% → 100% | 13d → none |  |
| 74 | Populate PCB's | 2014-11-17 A | 2014-11-18 A | 0% → 100% | 13d → none |  |
| 75 | Populate enclosures | 2014-11-18 A | 2014-11-21 A | 0% → 100% | 8.12d → none |  |
